# TopCoder Software Project Plan

Schedule from MS Project, 2005-06-29 to 2006-10-05, A marks actual dates.
TopCoder Software Project Plan
TopCoder

## Calendars

- Standard: Mon-Fri 08:00-12:00, 13:00-17:00; Sat-Sun off.

## Resources

| Resource |
| --- |
| Project Manager |
| Component Architect |
| Information Architect |
| Component Manager |
| Application Architect |
| Application Assembler 1 |
| Deployment Engineer 1 |
| Customer |
| Member |
| Review |
| Application Assembler 4 |
| Application Assembler 3 |
| Application Assembler 2 |
| Deployment Engineer 3 |
| Deployment Engineer 2 |
| Deployment Engineer |
| Deployment Engineer/Project Manager |
| Javier |
| Greg Paul |
| Dave Messinger |
| Lorie Norman |
| Tony Jefts |
| test case participants |
| All Teams |
| All Captains |
| Reviewer3 |
| Reviewer2 |
| Reviewer1 |
| Assembly Manager |
| Architect |
| DE |
| Review Team |
| Kim Ruhl |
| Petar Canic |
| WishingBone |
| Brian Chang |
| Dean Brodrick |

## Schedule

| ID | WBS | Task | Type | Duration | Start | Finish | Predecessors | Complete | Remaining | Baseline start | Baseline finish | Baseline duration | Total slack | Constraint | Resources | Work | Actual work |
| --- | --- | --- | --- | --- | --- | --- | --- | --- | --- | --- | --- | --- | --- | --- | --- | --- | --- |
| 1 | 1 | **TopCoder Online Review/Scorecard Project** |  | 332d? | 2005-06-29 A | 2006-10-05 |  | 11% | 295.62d? |  |  |  | 0d |  |  | 7544h | 840h |
| 2 | 1.1 | Kick Off Meeting |  | 0.33d? | 2006-03-02 | 2006-03-02 |  |  |  |  |  |  | 135.67d | start no earlier than 2006-03-02 | Dave Messinger; Lorie Norman; Tony Jefts | 8h |  |
| 3 | 1.2 | Creation of TopCoder Application Forum |  | 1d | 2006-03-02 A | 2006-03-03 A | 2 | 100% |  |  |  |  |  | start no earlier than 2005-06-29 | Lorie Norman | 8h | 8h |
| 4 | 1.3 | Assign Client Permissions to Forums |  | 1d | 2006-03-02 A | 2006-03-02 A |  | 100% |  |  |  |  |  | start no earlier than 2005-06-29 | Lorie Norman | 8h | 8h |
| 5 | 1.4 | Create SVN module for Application |  | 1d | 2005-06-29 A | 2005-06-29 A |  | 100% |  |  |  |  |  | start no earlier than 2005-06-29 | Lorie Norman | 8h | 8h |
| 6 | 1.5 | Key Stakeholder Meetings |  | 1.5d | 2006-03-06 A | 2006-03-07 A |  | 100% |  |  |  |  |  | start no earlier than 2006-03-06 | Greg Paul; Javier; Dave Messinger; Lorie Norman | 48h | 48h |
| 7 | 1.6 | **Application Specification** |  | 33.5d? | 2006-03-02 A | 2006-04-18 A |  | 100% |  | 2004-01-20 | 2004-02-11 | 17d? |  |  |  | 280h | 280h |
| 8 | 1.6.1 | **Requirement Specification Draft** |  | 1d | 2006-03-03 A | 2006-03-03 A |  | 100% |  | 2004-01-20 | 2004-01-22 | 3d? |  |  | Lorie Norman | 8h | 8h |
| 9 | 1.6.1.1 | Fill in Scope |  | 1d | 2006-03-03 A | 2006-03-03 A |  | 100% |  |  |  |  |  | start no earlier than 2006-03-03 |  |  |  |
| 10 | 1.6.2 | Review Meeting |  | 0.5d | 2006-03-06 A | 2006-03-06 A | 8 | 100% |  | 2004-01-23 | 2004-01-23 | 1d? |  |  | Project Manager; Customer | 8h | 8h |
| 11 | 1.6.3 | Create/Update Use Cases |  | 2d | 2006-03-02 A | 2006-03-03 A |  | 100% |  |  |  |  |  | start no earlier than 2006-03-02 |  |  |  |
| 12 | 1.6.4 | **Module Specification** |  | 18.5d | 2006-03-09 A | 2006-04-04 A |  | 100% |  | 2004-01-23 | 2004-02-11 | 14d? |  |  |  | 80h | 80h |
| 13 | 1.6.4.1 | Create/Update Activity Diagram |  | 10d | 2006-03-15 A | 2006-03-28 A | 10 | 100% |  |  |  |  |  | finish no earlier than 2006-03-28 | Project Manager | 80h | 80h |
| 14 | 1.6.4.2 | Fill in Logic Requirements for use cases and activity diagrams |  | 5d | 2006-03-09 A | 2006-04-03 A | 13 | 100% |  |  |  |  |  |  |  |  |  |
| 15 | 1.6.4.3 | Review Meeting |  | 1d | 2006-04-04 A | 2006-04-04 A | 14 | 100% |  |  |  |  |  | start no earlier than 2006-03-10 |  |  |  |
| 16 | 1.6.5 | Create Site Map |  | 1d? | 2006-04-04 A | 2006-04-04 A |  | 100% |  |  |  |  |  | start no earlier than 2006-04-04 |  |  |  |
| 17 | 1.6.6 | Review Meeting |  | 0.5d | 2006-04-03 A | 2006-04-03 A |  | 100% |  |  |  |  |  | start no earlier than 2006-04-03 |  |  |  |
| 18 | 1.6.7 | Prototype Revision 1 |  | 14d | 2006-03-20 A | 2006-04-06 A |  | 100% |  |  |  |  |  | finish no earlier than 2006-04-06 | Kim Ruhl | 112h | 112h |
| 19 | 1.6.8 | Architecture Diagram Draft |  | 1d | 2006-03-22 A | 2006-03-23 A | 17 | 100% |  | 2004-01-27 | 2004-01-28 | 2d? |  | start no earlier than 2005-01-19 | Project Manager | 8h | 8h |
| 20 | 1.6.9 | Fill in Technical Requirements |  | 0.5d | 2006-04-04 A | 2006-04-04 A | 19 | 100% |  |  |  |  |  | start no earlier than 2006-04-04 |  |  |  |
| 21 | 1.6.10 | Review Meeting |  | 2d | 2006-04-07 A | 2006-04-10 A | 18 | 100% |  | 2004-01-30 | 2004-01-30 | 1d? |  | start no earlier than 2006-04-07 | Project Manager; Customer | 32h | 32h |
| 22 | 1.6.11 | Prototype Revision 2 Review |  | 2d | 2006-04-11 A | 2006-04-12 A | 21 | 100% |  |  |  |  |  | start no earlier than 2006-04-11 |  |  |  |
| 23 | 1.6.12 | Complete QA Plan |  | 1d | 2006-04-05 A | 2006-04-05 A | 12 | 100% |  |  |  |  |  |  |  |  |  |
| 24 | 1.6.13 | Review Meeting |  | 0.5d | 2006-04-13 A | 2006-04-13 A | 22 | 100% |  | 2004-02-06 | 2004-02-06 | 1d? |  |  | Project Manager; Customer | 8h | 8h |
| 25 | 1.6.14 | Update Final Specification Deliverables |  | 2d | 2006-04-13 A | 2006-04-17 A | 24 | 100% |  | 2004-02-09 | 2004-02-10 | 2d? |  | start no earlier than 2006-04-06 | Project Manager | 16h | 16h |
| 26 | 1.6.15 | Final Specification Presentation | milestone | 1d? | 2006-04-17 A | 2006-04-18 A | 25 | 100% |  | 2004-02-11 | 2004-02-11 | 1d? |  |  | Project Manager | 8h | 8h |

Notes:
- 12: This will be iterated over multiple times for each module.

| ID | WBS | Task | Type | Duration | Start | Finish | Predecessors | Complete | Remaining | Total slack | Free slack | Constraint | Resources | Work | Actual work |
| --- | --- | --- | --- | --- | --- | --- | --- | --- | --- | --- | --- | --- | --- | --- | --- |
| 27 | 1.7 | **Application Architecture** |  | 35.5d | 2006-04-18 A | 2006-06-06 |  | 66% | 12.11d | 87d |  |  |  | 728h | 488h |
| 28 | 1.7.1 | Test Scenarios |  | 10d | 2006-05-08 A | 2006-05-19 A | 23 | 100% |  |  |  | start no earlier than 2006-05-08 | Dean Brodrick | 80h | 80h |
| 29 | 1.7.2 | Update Site Map |  | 5d | 2006-04-18 A | 2006-04-25 A | 7 | 100% |  |  |  |  | Kim Ruhl; Petar Canic | 80h | 80h |
| 30 | 1.6.3 | Physical Data Model Definition |  | 5d | 2006-04-18 A | 2006-04-25 A | 7 | 100% |  |  |  | finish no earlier than 2005-02-04 | WishingBone | 40h | 40h |
| 31 | 1.7.4 | **UML Diagrams** |  | 32d | 2006-04-20 A | 2006-06-02 |  | 62% | 12.14d | 89d |  |  |  | 464h | 288h |
| 32 | 1.6.2 | Component Sequence Diagrams |  | 31d | 2006-04-20 A | 2006-06-01 A |  | 100% |  |  |  | finish no earlier than 2006-06-01 | WishingBone | 248h | 248h |
| 33 | 1.6.1 | Component Interface Diagram |  | 25d | 2006-05-01 A | 2006-06-02 |  | 12% | 22d | 84d |  | finish no earlier than 2006-06-02 | WishingBone | 200h | 24h |
| 34 | 1.7.4.3 | Component Diagram |  | 2d | 2006-05-25 A | 2006-05-28 A |  | 100% |  |  |  | finish no earlier than 2006-05-28 | WishingBone | 16h | 16h |
| 35 | 1.6.5 | Component Specifications | milestone | 5d | 2006-05-29 | 2006-06-02 |  |  |  | 82d | 0d | finish no earlier than 2006-06-02 | Component Architect | 40h |  |
| 36 | 1.7.6 | Application Design Specification |  | 1d | 2006-06-05 | 2006-06-05 | 35 |  |  | 82d | 0d | finish no earlier than 2006-06-02 | Component Architect | 8h |  |
| 37 | 1.7.7 | Review |  | 1d | 2006-06-06 | 2006-06-06 | 36 |  |  | 82d |  |  | Project Manager; Component Architect | 16h |  |
| 38 | 1.8 | **Component Production** |  | 46d | 2006-05-25 | 2006-07-27 |  |  |  | 0d |  |  |  | 5872h |  |
| 39 | 1.8.1 | **File Upload 2.0** |  | 26d | 2006-05-25 | 2006-06-29 |  |  |  | 20d |  |  |  | 208h |  |
| 40 | 1.8.1.1 | Design Posting |  | 6d | 2006-05-25 | 2006-06-01 |  |  |  | 20d | 0d | start no earlier than 2006-05-25 | Member | 48h |  |
| 41 | 1.8.1.2 | Design Review |  | 4d | 2006-06-02 | 2006-06-07 | 40 |  |  | 20d | 0d | finish no earlier than 2005-03-21 | Member | 32h |  |
| 42 | 1.8.1.3 | Design Final Fixes |  | 2d | 2006-06-08 | 2006-06-09 | 41 |  |  | 20d | 0d |  | Member | 16h |  |
| 43 | 1.8.1.4 | Creation of Dev Distro |  | 1d | 2006-06-12 | 2006-06-12 | 42 |  |  | 20d | 0d |  | Component Manager | 8h |  |
| 44 | 1.8.1.5 | Development Posting |  | 6d | 2006-06-13 | 2006-06-20 | 43 |  |  | 20d | 0d | start no earlier than 2005-03-30 | Member | 48h |  |
| 45 | 1.8.1.6 | Development Review |  | 4d | 2006-06-21 | 2006-06-26 | 44 |  |  | 20d | 0d |  | Member | 32h |  |
| 46 | 1.8.1.7 | Development Final Fixes |  | 2d | 2006-06-27 | 2006-06-28 | 45 |  |  | 20d | 0d | finish no earlier than 2005-04-06 | Member | 16h |  |
| 47 | 1.8.1.8 | Post to Catalog |  | 1d | 2006-06-29 | 2006-06-29 | 46 |  |  | 20d |  |  | Component Manager | 8h |  |
| 48 | 1.8.2 | **Cached Web Element Tag** |  | 26d | 2006-05-25 | 2006-06-29 |  |  |  | 20d |  |  |  | 208h |  |
| 49 | 1.8.2.1 | Design Posting |  | 6d | 2006-05-25 | 2006-06-01 |  |  |  | 20d | 0d | start no earlier than 2006-05-25 | Member | 48h |  |
| 50 | 1.8.2.2 | Design Review |  | 4d | 2006-06-02 | 2006-06-07 | 49 |  |  | 20d | 0d | finish no earlier than 2005-03-21 | Member | 32h |  |
| 51 | 1.8.2.3 | Design Final Fixes |  | 2d | 2006-06-08 | 2006-06-09 | 50 |  |  | 20d | 0d |  | Member | 16h |  |
| 52 | 1.8.2.4 | Creation of Dev Distro |  | 1d | 2006-06-12 | 2006-06-12 | 51 |  |  | 20d | 0d |  | Component Manager | 8h |  |
| 53 | 1.8.2.5 | Development Posting |  | 6d | 2006-06-13 | 2006-06-20 | 52 |  |  | 20d | 0d | start no earlier than 2005-03-30 | Member | 48h |  |
| 54 | 1.8.2.6 | Development Review |  | 4d | 2006-06-21 | 2006-06-26 | 53 |  |  | 20d | 0d |  | Member | 32h |  |
| 55 | 1.8.2.7 | Development Final Fixes |  | 2d | 2006-06-27 | 2006-06-28 | 54 |  |  | 20d | 0d | finish no earlier than 2005-04-06 | Member | 16h |  |
| 56 | 1.8.2.8 | Post to Catalog |  | 1d | 2006-06-29 | 2006-06-29 | 55 |  |  | 20d |  |  | Component Manager | 8h |  |

| ID | WBS | Task | Duration | Start | Finish | Predecessors | Total slack | Free slack | Constraint | Resources | Work |
| --- | --- | --- | --- | --- | --- | --- | --- | --- | --- | --- | --- |
| 57 | 1.8.3 | **Database Abstraction 1.1** | 26d | 2006-05-25 | 2006-06-29 |  | 20d |  |  |  | 208h |
| 58 | 1.8.3.1 | Design Posting | 6d | 2006-05-25 | 2006-06-01 |  | 20d | 0d | start no earlier than 2006-05-25 | Member | 48h |
| 59 | 1.8.3.2 | Design Review | 4d | 2006-06-02 | 2006-06-07 | 58 | 20d | 0d | finish no earlier than 2005-03-21 | Member | 32h |
| 60 | 1.8.3.3 | Design Final Fixes | 2d | 2006-06-08 | 2006-06-09 | 59 | 20d | 0d |  | Member | 16h |
| 61 | 1.8.3.4 | Creation of Dev Distro | 1d | 2006-06-12 | 2006-06-12 | 60 | 20d | 0d |  | Component Manager | 8h |
| 62 | 1.8.3.5 | Development Posting | 6d | 2006-06-13 | 2006-06-20 | 61 | 20d | 0d | start no earlier than 2005-03-30 | Member | 48h |
| 63 | 1.8.3.6 | Development Review | 4d | 2006-06-21 | 2006-06-26 | 62 | 20d | 0d |  | Member | 32h |
| 64 | 1.8.3.7 | Development Final Fixes | 2d | 2006-06-27 | 2006-06-28 | 63 | 20d | 0d | finish no earlier than 2005-04-06 | Member | 16h |
| 65 | 1.8.3.8 | Post to Catalog | 1d | 2006-06-29 | 2006-06-29 | 64 | 20d |  |  | Component Manager | 8h |
| 66 | 1.8.4 | **Search Builder - Bug Fix** | 26d | 2006-05-25 | 2006-06-29 |  | 20d |  |  |  | 208h |
| 67 | 1.8.4.1 | Design Posting | 6d | 2006-05-25 | 2006-06-01 |  | 20d | 0d | start no earlier than 2006-05-25 | Member | 48h |
| 68 | 1.8.4.2 | Design Review | 4d | 2006-06-02 | 2006-06-07 | 67 | 20d | 0d | finish no earlier than 2005-03-21 | Member | 32h |
| 69 | 1.8.4.3 | Design Final Fixes | 2d | 2006-06-08 | 2006-06-09 | 68 | 20d | 0d |  | Member | 16h |
| 70 | 1.8.4.4 | Creation of Dev Distro | 1d | 2006-06-12 | 2006-06-12 | 69 | 20d | 0d |  | Component Manager | 8h |
| 71 | 1.8.4.5 | Development Posting | 6d | 2006-06-13 | 2006-06-20 | 70 | 20d | 0d | start no earlier than 2005-03-30 | Member | 48h |
| 72 | 1.8.4.6 | Development Review | 4d | 2006-06-21 | 2006-06-26 | 71 | 20d | 0d |  | Member | 32h |
| 73 | 1.8.4.7 | Development Final Fixes | 2d | 2006-06-27 | 2006-06-28 | 72 | 20d | 0d | finish no earlier than 2005-04-06 | Member | 16h |
| 74 | 1.8.4.8 | Post to Catalog | 1d | 2006-06-29 | 2006-06-29 | 73 | 20d |  |  | Component Manager | 8h |
| 75 | 1.8.5 | **Scorecard Management (2 dev)** | 26d | 2006-06-01 | 2006-07-06 |  | 15d |  |  |  | 320h |
| 76 | 1.8.5.1 | Design Posting | 6d | 2006-06-01 | 2006-06-08 |  | 15d | 0d | start no earlier than 2006-06-01 | Member | 48h |
| 77 | 1.8.5.2 | Design Review | 4d | 2006-06-09 | 2006-06-14 | 76 | 15d | 0d | finish no earlier than 2005-03-21 | Member | 32h |
| 78 | 1.8.5.3 | Design Final Fixes | 2d | 2006-06-15 | 2006-06-16 | 77 | 15d | 0d |  | Member | 16h |
| 79 | 1.8.5.4 | **Scorecard Management Development** | 14d | 2006-06-19 | 2006-07-06 | 78 | 15d |  |  |  | 112h |
| 80 | 1.8.5.4.1 | Creation of Management Dev Distro | 1d | 2006-06-19 | 2006-06-19 | 78 | 15d | 0d |  | Component Manager | 8h |
| 81 | 1.8.5.4.2 | Development Posting | 6d | 2006-06-20 | 2006-06-27 | 80 | 15d | 0d | start no earlier than 2005-03-30 | Member | 48h |
| 82 | 1.8.5.4.3 | Development Review | 4d | 2006-06-28 | 2006-07-03 | 81 | 15d | 0d |  | Member | 32h |
| 83 | 1.8.5.4.4 | Development Final Fixes | 2d | 2006-07-04 | 2006-07-05 | 82 | 15d | 0d | finish no earlier than 2005-04-06 | Member | 16h |
| 84 | 1.8.5.4.5 | Post to Catalog | 1d | 2006-07-06 | 2006-07-06 | 83 | 15d |  |  | Component Manager | 8h |

| ID | WBS | Task | Duration | Start | Finish | Predecessors | Total slack | Free slack | Constraint | Resources | Work |
| --- | --- | --- | --- | --- | --- | --- | --- | --- | --- | --- | --- |
| 85 | 1.8.5.5 | **Scorecard Persistence Development** | 14d | 2006-06-19 | 2006-07-06 |  | 15d |  |  |  | 112h |
| 86 | 1.8.5.5.1 | Creation of Management Dev Distro | 1d | 2006-06-19 | 2006-06-19 | 78 | 28d |  |  | Component Manager | 8h |
| 87 | 1.8.5.5.2 | Development Posting | 6d | 2006-06-20 | 2006-06-27 | 80 | 22d |  | start no earlier than 2005-03-30 | Member | 48h |
| 88 | 1.8.5.5.3 | Development Review | 4d | 2006-06-28 | 2006-07-03 | 81 | 18d |  |  | Member | 32h |
| 89 | 1.8.5.5.4 | Development Final Fixes | 2d | 2006-07-04 | 2006-07-05 | 82 | 16d |  | finish no earlier than 2005-04-06 | Member | 16h |
| 90 | 1.8.5.5.5 | Post to Catalog | 1d | 2006-07-06 | 2006-07-06 | 83 | 15d |  |  | Component Manager | 8h |
| 91 | 1.8.6 | **Scorecard Data Structure** | 26d | 2006-06-01 | 2006-07-06 |  | 15d |  |  |  | 208h |
| 92 | 1.8.6.1 | Design Posting | 6d | 2006-06-01 | 2006-06-08 |  | 15d | 0d | start no earlier than 2006-06-01 | Member | 48h |
| 93 | 1.8.6.2 | Design Review | 4d | 2006-06-09 | 2006-06-14 | 92 | 15d | 0d | finish no earlier than 2005-03-21 | Member | 32h |
| 94 | 1.8.6.3 | Design Final Fixes | 2d | 2006-06-15 | 2006-06-16 | 93 | 15d | 0d |  | Member | 16h |
| 95 | 1.8.6.4 | Creation of Dev Distro | 1d | 2006-06-19 | 2006-06-19 | 94 | 15d | 0d |  | Component Manager | 8h |
| 96 | 1.8.6.5 | Development Posting | 6d | 2006-06-20 | 2006-06-27 | 95 | 15d | 0d | start no earlier than 2005-03-30 | Member | 48h |
| 97 | 1.8.6.6 | Development Review | 4d | 2006-06-28 | 2006-07-03 | 96 | 15d | 0d |  | Member | 32h |
| 98 | 1.8.6.7 | Development Final Fixes | 2d | 2006-07-04 | 2006-07-05 | 97 | 15d | 0d | finish no earlier than 2005-04-06 | Member | 16h |
| 99 | 1.8.6.8 | Post to Catalog | 1d | 2006-07-06 | 2006-07-06 | 98 | 15d |  |  | Component Manager | 8h |
| 100 | 1.8.7 | **Review Management (2 dev)** | 26d | 2006-06-01 | 2006-07-06 |  | 15d |  |  |  | 320h |
| 101 | 1.8.7.1 | Design Posting | 6d | 2006-06-01 | 2006-06-08 |  | 15d | 0d | start no earlier than 2006-06-01 | Member | 48h |
| 102 | 1.8.7.2 | Design Review | 4d | 2006-06-09 | 2006-06-14 | 101 | 15d | 0d | finish no earlier than 2005-03-21 | Member | 32h |
| 103 | 1.8.7.3 | Design Final Fixes | 2d | 2006-06-15 | 2006-06-16 | 102 | 15d | 0d |  | Member | 16h |
| 104 | 1.8.7.4 | **Review Management Development** | 14d | 2006-06-19 | 2006-07-06 | 103 | 15d |  |  |  | 112h |
| 105 | 1.8.7.4.1 | Creation of Management Dev Distro | 1d | 2006-06-19 | 2006-06-19 | 103 | 15d | 0d |  | Component Manager | 8h |
| 106 | 1.8.7.4.2 | Development Posting | 6d | 2006-06-20 | 2006-06-27 | 105 | 15d | 0d | start no earlier than 2005-03-30 | Member | 48h |
| 107 | 1.8.7.4.3 | Development Review | 4d | 2006-06-28 | 2006-07-03 | 106 | 15d | 0d |  | Member | 32h |
| 108 | 1.8.7.4.4 | Development Final Fixes | 2d | 2006-07-04 | 2006-07-05 | 107 | 15d | 0d | finish no earlier than 2005-04-06 | Member | 16h |
| 109 | 1.8.7.4.5 | Post to Catalog | 1d | 2006-07-06 | 2006-07-06 | 108 | 15d |  |  | Component Manager | 8h |

| ID | WBS | Task | Duration | Start | Finish | Predecessors | Total slack | Free slack | Constraint | Resources | Work |
| --- | --- | --- | --- | --- | --- | --- | --- | --- | --- | --- | --- |
| 110 | 1.8.7.5 | **Review Persistence Development** | 14d | 2006-06-19 | 2006-07-06 |  | 15d |  |  |  | 112h |
| 111 | 1.8.7.5.1 | Creation of Management Dev Distro | 1d | 2006-06-19 | 2006-06-19 | 103 | 15d | 0d |  | Component Manager | 8h |
| 112 | 1.8.7.5.2 | Development Posting | 6d | 2006-06-20 | 2006-06-27 | 111 | 15d | 0d | start no earlier than 2005-03-30 | Member | 48h |
| 113 | 1.8.7.5.3 | Development Review | 4d | 2006-06-28 | 2006-07-03 | 112 | 15d | 0d |  | Member | 32h |
| 114 | 1.8.7.5.4 | Development Final Fixes | 2d | 2006-07-04 | 2006-07-05 | 113 | 15d | 0d | finish no earlier than 2005-04-06 | Member | 16h |
| 115 | 1.8.7.5.5 | Post to Catalog | 1d | 2006-07-06 | 2006-07-06 | 114 | 15d |  |  | Component Manager | 8h |
| 116 | 1.8.8 | **Scorecard Data Structure** | 26d | 2006-06-01 | 2006-07-06 |  | 15d |  |  |  | 208h |
| 117 | 1.8.8.1 | Design Posting | 6d | 2006-06-01 | 2006-06-08 |  | 15d | 0d | start no earlier than 2006-06-01 | Member | 48h |
| 118 | 1.8.8.2 | Design Review | 4d | 2006-06-09 | 2006-06-14 | 117 | 15d | 0d | finish no earlier than 2005-03-21 | Member | 32h |
| 119 | 1.8.8.3 | Design Final Fixes | 2d | 2006-06-15 | 2006-06-16 | 118 | 15d | 0d |  | Member | 16h |
| 120 | 1.8.8.4 | Creation of Dev Distro | 1d | 2006-06-19 | 2006-06-19 | 119 | 15d | 0d |  | Component Manager | 8h |
| 121 | 1.8.8.5 | Development Posting | 6d | 2006-06-20 | 2006-06-27 | 120 | 15d | 0d | start no earlier than 2005-03-30 | Member | 48h |
| 122 | 1.8.8.6 | Development Review | 4d | 2006-06-28 | 2006-07-03 | 121 | 15d | 0d |  | Member | 32h |
| 123 | 1.8.8.7 | Development Final Fixes | 2d | 2006-07-04 | 2006-07-05 | 122 | 15d | 0d | finish no earlier than 2005-04-06 | Member | 16h |
| 124 | 1.8.8.8 | Post to Catalog | 1d | 2006-07-06 | 2006-07-06 | 123 | 15d |  |  | Component Manager | 8h |
| 125 | 1.8.9 | **Project Phases Management** | 26d | 2006-06-08 | 2006-07-13 |  | 10d |  |  |  | 208h |
| 126 | 1.8.9.1 | Design Posting | 6d | 2006-06-08 | 2006-06-15 |  | 10d | 0d | start no earlier than 2006-06-08 | Member | 48h |
| 127 | 1.8.9.2 | Design Review | 4d | 2006-06-16 | 2006-06-21 | 126 | 10d | 0d | finish no earlier than 2005-03-21 | Member | 32h |
| 128 | 1.8.9.3 | Design Final Fixes | 2d | 2006-06-22 | 2006-06-23 | 127 | 10d | 0d |  | Member | 16h |
| 129 | 1.8.9.4 | Creation of Dev Distro | 1d | 2006-06-26 | 2006-06-26 | 128 | 10d | 0d |  | Component Manager | 8h |
| 130 | 1.8.9.5 | Development Posting | 6d | 2006-06-27 | 2006-07-04 | 129 | 10d | 0d | start no earlier than 2005-03-30 | Member | 48h |
| 131 | 1.8.9.6 | Development Review | 4d | 2006-07-05 | 2006-07-10 | 130 | 10d | 0d |  | Member | 32h |
| 132 | 1.8.9.7 | Development Final Fixes | 2d | 2006-07-11 | 2006-07-12 | 131 | 10d | 0d | finish no earlier than 2005-04-06 | Member | 16h |
| 133 | 1.8.9.8 | Post to Catalog | 1d | 2006-07-13 | 2006-07-13 | 132 | 10d |  |  | Component Manager | 8h |

| ID | WBS | Task | Duration | Start | Finish | Predecessors | Total slack | Free slack | Constraint | Resources | Work |
| --- | --- | --- | --- | --- | --- | --- | --- | --- | --- | --- | --- |
| 134 | 1.8.10 | **Review Score Calculator** | 26d | 2006-06-08 | 2006-07-13 |  | 10d |  |  |  | 208h |
| 135 | 1.8.10.1 | Design Posting | 6d | 2006-06-08 | 2006-06-15 |  | 10d | 0d | start no earlier than 2006-06-08 | Member | 48h |
| 136 | 1.8.10.2 | Design Review | 4d | 2006-06-16 | 2006-06-21 | 135 | 10d | 0d | finish no earlier than 2005-03-21 | Member | 32h |
| 137 | 1.8.10.3 | Design Final Fixes | 2d | 2006-06-22 | 2006-06-23 | 136 | 10d | 0d |  | Member | 16h |
| 138 | 1.8.10.4 | Creation of Dev Distro | 1d | 2006-06-26 | 2006-06-26 | 137 | 10d | 0d |  | Component Manager | 8h |
| 139 | 1.8.10.5 | Development Posting | 6d | 2006-06-27 | 2006-07-04 | 138 | 10d | 0d | start no earlier than 2005-03-30 | Member | 48h |
| 140 | 1.8.10.6 | Development Review | 4d | 2006-07-05 | 2006-07-10 | 139 | 10d | 0d |  | Member | 32h |
| 141 | 1.8.10.7 | Development Final Fixes | 2d | 2006-07-11 | 2006-07-12 | 140 | 10d | 0d | finish no earlier than 2005-04-06 | Member | 16h |
| 142 | 1.8.10.8 | Post to Catalog | 1d | 2006-07-13 | 2006-07-13 | 141 | 10d |  |  | Component Manager | 8h |
| 143 | 1.8.11 | **Review Score Aggregator** | 26d | 2006-06-08 | 2006-07-13 |  | 10d |  |  |  | 208h |
| 144 | 1.8.11.1 | Design Posting | 6d | 2006-06-08 | 2006-06-15 |  | 10d | 0d | start no earlier than 2006-06-08 | Member | 48h |
| 145 | 1.8.11.2 | Design Review | 4d | 2006-06-16 | 2006-06-21 | 144 | 10d | 0d | finish no earlier than 2005-03-21 | Member | 32h |
| 146 | 1.8.11.3 | Design Final Fixes | 2d | 2006-06-22 | 2006-06-23 | 145 | 10d | 0d |  | Member | 16h |
| 147 | 1.8.11.4 | Creation of Dev Distro | 1d | 2006-06-26 | 2006-06-26 | 146 | 10d | 0d |  | Component Manager | 8h |
| 148 | 1.8.11.5 | Development Posting | 6d | 2006-06-27 | 2006-07-04 | 147 | 10d | 0d | start no earlier than 2005-03-30 | Member | 48h |
| 149 | 1.8.11.6 | Development Review | 4d | 2006-07-05 | 2006-07-10 | 148 | 10d | 0d |  | Member | 32h |
| 150 | 1.8.11.7 | Development Final Fixes | 2d | 2006-07-11 | 2006-07-12 | 149 | 10d | 0d | finish no earlier than 2005-04-06 | Member | 16h |
| 151 | 1.8.11.8 | Post to Catalog | 1d | 2006-07-13 | 2006-07-13 | 150 | 10d |  |  | Component Manager | 8h |
| 152 | 1.8.12 | **Project Management (2 dev)** | 26d | 2006-06-08 | 2006-07-13 |  | 10d |  |  |  | 320h |
| 153 | 1.8.12.1 | Design Posting | 6d | 2006-06-08 | 2006-06-15 |  | 10d | 0d | start no earlier than 2006-06-08 | Member | 48h |
| 154 | 1.8.12.2 | Design Review | 4d | 2006-06-16 | 2006-06-21 | 153 | 10d | 0d | finish no earlier than 2005-03-21 | Member | 32h |
| 155 | 1.8.12.3 | Design Final Fixes | 2d | 2006-06-22 | 2006-06-23 | 154 | 10d | 0d |  | Member | 16h |
| 156 | 1.8.12.4 | **Project Management Development** | 14d | 2006-06-26 | 2006-07-13 | 155 | 10d |  |  |  | 112h |
| 157 | 1.8.12.4.1 | Creation of Management Dev Distro | 1d | 2006-06-26 | 2006-06-26 | 155 | 10d | 0d |  | Component Manager | 8h |
| 158 | 1.8.12.4.2 | Development Posting | 6d | 2006-06-27 | 2006-07-04 | 157 | 10d | 0d | start no earlier than 2005-03-30 | Member | 48h |
| 159 | 1.8.12.4.3 | Development Review | 4d | 2006-07-05 | 2006-07-10 | 158 | 10d | 0d |  | Member | 32h |
| 160 | 1.8.12.4.4 | Development Final Fixes | 2d | 2006-07-11 | 2006-07-12 | 159 | 10d | 0d | finish no earlier than 2005-04-06 | Member | 16h |
| 161 | 1.8.12.4.5 | Post to Catalog | 1d | 2006-07-13 | 2006-07-13 | 160 | 10d |  |  | Component Manager | 8h |

| ID | WBS | Task | Duration | Start | Finish | Predecessors | Total slack | Free slack | Constraint | Resources | Work |
| --- | --- | --- | --- | --- | --- | --- | --- | --- | --- | --- | --- |
| 162 | 1.8.12.5 | **Project Persistence Development** | 14d | 2006-06-26 | 2006-07-13 |  | 10d |  |  |  | 112h |
| 163 | 1.8.12.5.1 | Creation of Management Dev Distro | 1d | 2006-06-26 | 2006-06-26 | 155 | 10d | 0d |  | Component Manager | 8h |
| 164 | 1.8.12.5.2 | Development Posting | 6d | 2006-06-27 | 2006-07-04 | 163 | 10d | 0d | start no earlier than 2005-03-30 | Member | 48h |
| 165 | 1.8.12.5.3 | Development Review | 4d | 2006-07-05 | 2006-07-10 | 164 | 10d | 0d |  | Member | 32h |
| 166 | 1.8.12.5.4 | Development Final Fixes | 2d | 2006-07-11 | 2006-07-12 | 165 | 10d | 0d | finish no earlier than 2005-04-06 | Member | 16h |
| 167 | 1.8.12.5.5 | Post to Catalog | 1d | 2006-07-13 | 2006-07-13 | 166 | 10d |  |  | Component Manager | 8h |
| 168 | 1.8.13 | **Resource Management** | 26d | 2006-06-08 | 2006-07-13 |  | 10d |  |  |  | 320h |
| 169 | 1.8.13.1 | Design Posting | 6d | 2006-06-08 | 2006-06-15 |  | 10d | 0d | start no earlier than 2006-06-08 | Member | 48h |
| 170 | 1.8.13.2 | Design Review | 4d | 2006-06-16 | 2006-06-21 | 169 | 10d | 0d | finish no earlier than 2005-03-21 | Member | 32h |
| 171 | 1.8.13.3 | Design Final Fixes | 2d | 2006-06-22 | 2006-06-23 | 170 | 10d | 0d |  | Member | 16h |
| 172 | 1.8.13.4 | **Resource Management Development** | 14d | 2006-06-26 | 2006-07-13 | 171 | 10d |  |  |  | 112h |
| 173 | 1.8.13.4.1 | Creation of Management Dev Distro | 1d | 2006-06-26 | 2006-06-26 | 171 | 10d | 0d |  | Component Manager | 8h |
| 174 | 1.8.13.4.2 | Development Posting | 6d | 2006-06-27 | 2006-07-04 | 173 | 10d | 0d | start no earlier than 2005-03-30 | Member | 48h |
| 175 | 1.8.13.4.3 | Development Review | 4d | 2006-07-05 | 2006-07-10 | 174 | 10d | 0d |  | Member | 32h |
| 176 | 1.8.13.4.4 | Development Final Fixes | 2d | 2006-07-11 | 2006-07-12 | 175 | 10d | 0d | finish no earlier than 2005-04-06 | Member | 16h |
| 177 | 1.8.13.4.5 | Post to Catalog | 1d | 2006-07-13 | 2006-07-13 | 176 | 10d |  |  | Component Manager | 8h |
| 178 | 1.8.13.5 | **Resource Persistence Development** | 14d | 2006-06-26 | 2006-07-13 |  | 10d |  |  |  | 112h |
| 179 | 1.8.13.5.1 | Creation of Management Dev Distro | 1d | 2006-06-26 | 2006-06-26 | 171 | 10d | 0d |  | Component Manager | 8h |
| 180 | 1.8.13.5.2 | Development Posting | 6d | 2006-06-27 | 2006-07-04 | 179 | 10d | 0d | start no earlier than 2005-03-30 | Member | 48h |
| 181 | 1.8.13.5.3 | Development Review | 4d | 2006-07-05 | 2006-07-10 | 180 | 10d | 0d |  | Member | 32h |
| 182 | 1.8.13.5.4 | Development Final Fixes | 2d | 2006-07-11 | 2006-07-12 | 181 | 10d | 0d | finish no earlier than 2005-04-06 | Member | 16h |
| 183 | 1.8.13.5.5 | Post to Catalog | 1d | 2006-07-13 | 2006-07-13 | 182 | 10d |  |  | Component Manager | 8h |
| 184 | 1.8.14 | **Deliverable Management** | 26d | 2006-06-08 | 2006-07-13 |  | 10d |  |  |  | 320h |
| 185 | 1.8.14.1 | Design Posting | 6d | 2006-06-08 | 2006-06-15 |  | 10d | 0d | start no earlier than 2006-06-08 | Member | 48h |
| 186 | 1.8.14.2 | Design Review | 4d | 2006-06-16 | 2006-06-21 | 185 | 10d | 0d | finish no earlier than 2005-03-21 | Member | 32h |
| 187 | 1.8.14.3 | Design Final Fixes | 2d | 2006-06-22 | 2006-06-23 | 186 | 10d | 0d |  | Member | 16h |

| ID | WBS | Task | Duration | Start | Finish | Predecessors | Total slack | Free slack | Constraint | Resources | Work |
| --- | --- | --- | --- | --- | --- | --- | --- | --- | --- | --- | --- |
| 188 | 1.8.14.4 | **Deliverable Management Development** | 14d | 2006-06-26 | 2006-07-13 |  | 10d |  |  |  | 112h |
| 189 | 1.8.14.4.1 | Creation of Management Dev Distro | 1d | 2006-06-26 | 2006-06-26 | 187 | 10d | 0d |  | Component Manager | 8h |
| 190 | 1.8.14.4.2 | Development Posting | 6d | 2006-06-27 | 2006-07-04 | 189 | 10d | 0d | start no earlier than 2005-03-30 | Member | 48h |
| 191 | 1.8.14.4.3 | Development Review | 4d | 2006-07-05 | 2006-07-10 | 190 | 10d | 0d |  | Member | 32h |
| 192 | 1.8.14.4.4 | Development Final Fixes | 2d | 2006-07-11 | 2006-07-12 | 191 | 10d | 0d | finish no earlier than 2005-04-06 | Member | 16h |
| 193 | 1.8.14.4.5 | Post to Catalog | 1d | 2006-07-13 | 2006-07-13 | 192 | 10d |  |  | Component Manager | 8h |
| 194 | 1.8.14.5 | **Deliverable Persistence Development** | 14d | 2006-06-26 | 2006-07-13 |  | 10d |  |  |  | 112h |
| 195 | 1.8.14.5.1 | Creation of Management Dev Distro | 1d | 2006-06-26 | 2006-06-26 | 187 | 10d | 0d |  | Component Manager | 8h |
| 196 | 1.8.14.5.2 | Development Posting | 6d | 2006-06-27 | 2006-07-04 | 195 | 10d | 0d | start no earlier than 2005-03-30 | Member | 48h |
| 197 | 1.8.14.5.3 | Development Review | 4d | 2006-07-05 | 2006-07-10 | 196 | 10d | 0d |  | Member | 32h |
| 198 | 1.8.14.5.4 | Development Final Fixes | 2d | 2006-07-11 | 2006-07-12 | 197 | 10d | 0d | finish no earlier than 2005-04-06 | Member | 16h |
| 199 | 1.8.14.5.5 | Post to Catalog | 1d | 2006-07-13 | 2006-07-13 | 198 | 10d |  |  | Component Manager | 8h |
| 200 | 1.8.15 | **Phase Management** | 26d | 2006-06-15 | 2006-07-20 |  | 5d |  |  |  | 320h |
| 201 | 1.8.15.1 | Design Posting | 6d | 2006-06-15 | 2006-06-22 |  | 5d | 0d | start no earlier than 2006-06-15 | Member | 48h |
| 202 | 1.8.15.2 | Design Review | 4d | 2006-06-23 | 2006-06-28 | 201 | 5d | 0d | finish no earlier than 2005-03-21 | Member | 32h |
| 203 | 1.8.15.3 | Design Final Fixes | 2d | 2006-06-29 | 2006-06-30 | 202 | 5d | 0d |  | Member | 16h |
| 204 | 1.8.15.4 | **Phase Management Development** | 14d | 2006-07-03 | 2006-07-20 | 203 | 5d |  |  |  | 112h |
| 205 | 1.8.15.4.1 | Creation of Management Dev Distro | 1d | 2006-07-03 | 2006-07-03 | 203 | 5d | 0d |  | Component Manager | 8h |
| 206 | 1.8.15.4.2 | Development Posting | 6d | 2006-07-04 | 2006-07-11 | 205 | 5d | 0d | start no earlier than 2005-03-30 | Member | 48h |
| 207 | 1.8.15.4.3 | Development Review | 4d | 2006-07-12 | 2006-07-17 | 206 | 5d | 0d |  | Member | 32h |
| 208 | 1.8.15.4.4 | Development Final Fixes | 2d | 2006-07-18 | 2006-07-19 | 207 | 5d | 0d | finish no earlier than 2005-04-06 | Member | 16h |
| 209 | 1.8.15.4.5 | Post to Catalog | 1d | 2006-07-20 | 2006-07-20 | 208 | 5d |  |  | Component Manager | 8h |
| 210 | 1.8.15.5 | **Phase Persistence Development** | 14d | 2006-07-03 | 2006-07-20 |  | 5d |  |  |  | 112h |
| 211 | 1.8.15.5.1 | Creation of Management Dev Distro | 1d | 2006-07-03 | 2006-07-03 | 203 | 5d | 0d |  | Component Manager | 8h |
| 212 | 1.8.15.5.2 | Development Posting | 6d | 2006-07-04 | 2006-07-11 | 211 | 5d | 0d | start no earlier than 2005-03-30 | Member | 48h |
| 213 | 1.8.15.5.3 | Development Review | 4d | 2006-07-12 | 2006-07-17 | 212 | 5d | 0d |  | Member | 32h |
| 214 | 1.8.15.5.4 | Development Final Fixes | 2d | 2006-07-18 | 2006-07-19 | 213 | 5d | 0d | finish no earlier than 2005-04-06 | Member | 16h |
| 215 | 1.8.15.5.5 | Post to Catalog | 1d | 2006-07-20 | 2006-07-20 | 214 | 5d |  |  | Component Manager | 8h |

| ID | WBS | Task | Duration | Start | Finish | Predecessors | Total slack | Free slack | Constraint | Resources | Work |
| --- | --- | --- | --- | --- | --- | --- | --- | --- | --- | --- | --- |
| 216 | 1.8.16 | **Project Phase Template** | 26d | 2006-06-15 | 2006-07-20 |  | 5d |  |  |  | 208h |
| 217 | 1.8.16.1 | Design Posting | 6d | 2006-06-15 | 2006-06-22 |  | 5d | 0d | start no earlier than 2006-06-15 | Member | 48h |
| 218 | 1.8.16.2 | Design Review | 4d | 2006-06-23 | 2006-06-28 | 217 | 5d | 0d | finish no earlier than 2005-03-21 | Member | 32h |
| 219 | 1.8.16.3 | Design Final Fixes | 2d | 2006-06-29 | 2006-06-30 | 218 | 5d | 0d |  | Member | 16h |
| 220 | 1.8.16.4 | Creation of Dev Distro | 1d | 2006-07-03 | 2006-07-03 | 219 | 5d | 0d |  | Component Manager | 8h |
| 221 | 1.8.16.5 | Development Posting | 6d | 2006-07-04 | 2006-07-11 | 220 | 5d | 0d | start no earlier than 2005-03-30 | Member | 48h |
| 222 | 1.8.16.6 | Development Review | 4d | 2006-07-12 | 2006-07-17 | 221 | 5d | 0d |  | Member | 32h |
| 223 | 1.8.16.7 | Development Final Fixes | 2d | 2006-07-18 | 2006-07-19 | 222 | 5d | 0d | finish no earlier than 2005-04-06 | Member | 16h |
| 224 | 1.8.16.8 | Post to Catalog | 1d | 2006-07-20 | 2006-07-20 | 223 | 5d |  |  | Component Manager | 8h |
| 225 | 1.8.17 | **Online Review Login (custom)** | 26d | 2006-06-15 | 2006-07-20 |  | 5d |  |  |  | 208h |
| 226 | 1.8.17.1 | Design Posting | 6d | 2006-06-15 | 2006-06-22 |  | 5d | 0d | start no earlier than 2006-06-15 | Member | 48h |
| 227 | 1.8.17.2 | Design Review | 4d | 2006-06-23 | 2006-06-28 | 226 | 5d | 0d | finish no earlier than 2005-03-21 | Member | 32h |
| 228 | 1.8.17.3 | Design Final Fixes | 2d | 2006-06-29 | 2006-06-30 | 227 | 5d | 0d |  | Member | 16h |
| 229 | 1.8.17.4 | Creation of Dev Distro | 1d | 2006-07-03 | 2006-07-03 | 228 | 5d | 0d |  | Component Manager | 8h |
| 230 | 1.8.17.5 | Development Posting | 6d | 2006-07-04 | 2006-07-11 | 229 | 5d | 0d | start no earlier than 2005-03-30 | Member | 48h |
| 231 | 1.8.17.6 | Development Review | 4d | 2006-07-12 | 2006-07-17 | 230 | 5d | 0d |  | Member | 32h |
| 232 | 1.8.17.7 | Development Final Fixes | 2d | 2006-07-18 | 2006-07-19 | 231 | 5d | 0d | finish no earlier than 2005-04-06 | Member | 16h |
| 233 | 1.8.17.8 | Post to Catalog | 1d | 2006-07-20 | 2006-07-20 | 232 | 5d |  |  | Component Manager | 8h |
| 234 | 1.8.18 | **User Project Data Store (custom)** | 26d | 2006-06-15 | 2006-07-20 |  | 5d |  |  |  | 208h |
| 235 | 1.8.18.1 | Design Posting | 6d | 2006-06-15 | 2006-06-22 |  | 5d | 0d | start no earlier than 2006-06-15 | Member | 48h |
| 236 | 1.8.18.2 | Design Review | 4d | 2006-06-23 | 2006-06-28 | 235 | 5d | 0d | finish no earlier than 2005-03-21 | Member | 32h |
| 237 | 1.8.18.3 | Design Final Fixes | 2d | 2006-06-29 | 2006-06-30 | 236 | 5d | 0d |  | Member | 16h |
| 238 | 1.8.18.4 | Creation of Dev Distro | 1d | 2006-07-03 | 2006-07-03 | 237 | 5d | 0d |  | Component Manager | 8h |
| 239 | 1.8.18.5 | Development Posting | 6d | 2006-07-04 | 2006-07-11 | 238 | 5d | 0d | start no earlier than 2005-03-30 | Member | 48h |
| 240 | 1.8.18.6 | Development Review | 4d | 2006-07-12 | 2006-07-17 | 239 | 5d | 0d |  | Member | 32h |
| 241 | 1.8.18.7 | Development Final Fixes | 2d | 2006-07-18 | 2006-07-19 | 240 | 5d | 0d | finish no earlier than 2005-04-06 | Member | 16h |
| 242 | 1.8.18.8 | Post to Catalog | 1d | 2006-07-20 | 2006-07-20 | 241 | 5d |  |  | Component Manager | 8h |

| ID | WBS | Task | Duration | Start | Finish | Predecessors | Total slack | Free slack | Constraint | Resources | Work |
| --- | --- | --- | --- | --- | --- | --- | --- | --- | --- | --- | --- |
| 243 | 1.8.19 | **Online Review Ajax Support (custom)** | 26d | 2006-06-15 | 2006-07-20 |  | 5d |  |  |  | 208h |
| 244 | 1.8.19.1 | Design Posting | 6d | 2006-06-15 | 2006-06-22 |  | 5d | 0d | start no earlier than 2006-06-15 | Member | 48h |
| 245 | 1.8.19.2 | Design Review | 4d | 2006-06-23 | 2006-06-28 | 244 | 5d | 0d | finish no earlier than 2005-03-21 | Member | 32h |
| 246 | 1.8.19.3 | Design Final Fixes | 2d | 2006-06-29 | 2006-06-30 | 245 | 5d | 0d |  | Member | 16h |
| 247 | 1.8.19.4 | Creation of Dev Distro | 1d | 2006-07-03 | 2006-07-03 | 246 | 5d | 0d |  | Component Manager | 8h |
| 248 | 1.8.19.5 | Development Posting | 6d | 2006-07-04 | 2006-07-11 | 247 | 5d | 0d | start no earlier than 2005-03-30 | Member | 48h |
| 249 | 1.8.19.6 | Development Review | 4d | 2006-07-12 | 2006-07-17 | 248 | 5d | 0d |  | Member | 32h |
| 250 | 1.8.19.7 | Development Final Fixes | 2d | 2006-07-18 | 2006-07-19 | 249 | 5d | 0d | finish no earlier than 2005-04-06 | Member | 16h |
| 251 | 1.8.19.8 | Post to Catalog | 1d | 2006-07-20 | 2006-07-20 | 250 | 5d |  |  | Component Manager | 8h |
| 252 | 1.8.20 | **Online Review Deliverables (custom)** | 26d | 2006-06-15 | 2006-07-20 |  | 5d |  |  |  | 208h |
| 253 | 1.8.20.1 | Design Posting | 6d | 2006-06-15 | 2006-06-22 |  | 5d | 0d | start no earlier than 2006-06-15 | Member | 48h |
| 254 | 1.8.20.2 | Design Review | 4d | 2006-06-23 | 2006-06-28 | 253 | 5d | 0d | finish no earlier than 2005-03-21 | Member | 32h |
| 255 | 1.8.20.3 | Design Final Fixes | 2d | 2006-06-29 | 2006-06-30 | 254 | 5d | 0d |  | Member | 16h |
| 256 | 1.8.20.4 | Creation of Dev Distro | 1d | 2006-07-03 | 2006-07-03 | 255 | 5d | 0d |  | Component Manager | 8h |
| 257 | 1.8.20.5 | Development Posting | 6d | 2006-07-04 | 2006-07-11 | 256 | 5d | 0d | start no earlier than 2005-03-30 | Member | 48h |
| 258 | 1.8.20.6 | Development Review | 4d | 2006-07-12 | 2006-07-17 | 257 | 5d | 0d |  | Member | 32h |
| 259 | 1.8.20.7 | Development Final Fixes | 2d | 2006-07-18 | 2006-07-19 | 258 | 5d | 0d | finish no earlier than 2005-04-06 | Member | 16h |
| 260 | 1.8.20.8 | Post to Catalog | 1d | 2006-07-20 | 2006-07-20 | 259 | 5d |  |  | Component Manager | 8h |
| 261 | 1.8.21 | **Online Review Phases (custom)** | 26d | 2006-06-22 | 2006-07-27 |  | 0d |  |  |  | 208h |
| 262 | 1.8.21.1 | Design Posting | 6d | 2006-06-22 | 2006-06-29 |  | 0d |  | start no earlier than 2006-06-22 | Member | 48h |
| 263 | 1.8.21.2 | Design Review | 4d | 2006-06-30 | 2006-07-05 | 262 | 0d |  | finish no earlier than 2005-03-21 | Member | 32h |
| 264 | 1.8.21.3 | Design Final Fixes | 2d | 2006-07-06 | 2006-07-07 | 263 | 0d |  |  | Member | 16h |
| 265 | 1.8.21.4 | Creation of Dev Distro | 1d | 2006-07-10 | 2006-07-10 | 264 | 0d |  |  | Component Manager | 8h |
| 266 | 1.8.21.5 | Development Posting | 6d | 2006-07-11 | 2006-07-18 | 265 | 0d |  | start no earlier than 2005-03-30 | Member | 48h |
| 267 | 1.8.21.6 | Development Review | 4d | 2006-07-19 | 2006-07-24 | 266 | 0d |  |  | Member | 32h |
| 268 | 1.8.21.7 | Development Final Fixes | 2d | 2006-07-25 | 2006-07-26 | 267 | 0d |  | finish no earlier than 2005-04-06 | Member | 16h |
| 269 | 1.8.21.8 | Post to Catalog | 1d | 2006-07-27 | 2006-07-27 | 268 | 0d |  |  | Component Manager | 8h |

| ID | WBS | Task | Duration | Start | Finish | Predecessors | Total slack | Constraint | Resources | Work |
| --- | --- | --- | --- | --- | --- | --- | --- | --- | --- | --- |
| 270 | 1.8.22 | **Online Review Web Elements (custom)** | 26d | 2006-06-22 | 2006-07-27 |  | 0d |  |  | 208h |
| 271 | 1.8.22.1 | Design Posting | 6d | 2006-06-22 | 2006-06-29 |  | 0d | start no earlier than 2006-06-22 | Member | 48h |
| 272 | 1.8.22.2 | Design Review | 4d | 2006-06-30 | 2006-07-05 | 271 | 0d | finish no earlier than 2005-03-21 | Member | 32h |
| 273 | 1.8.22.3 | Design Final Fixes | 2d | 2006-07-06 | 2006-07-07 | 272 | 0d |  | Member | 16h |
| 274 | 1.8.22.4 | Creation of Dev Distro | 1d | 2006-07-10 | 2006-07-10 | 273 | 0d |  | Component Manager | 8h |
| 275 | 1.8.22.5 | Development Posting | 6d | 2006-07-11 | 2006-07-18 | 274 | 0d | start no earlier than 2005-03-30 | Member | 48h |
| 276 | 1.8.22.6 | Development Review | 4d | 2006-07-19 | 2006-07-24 | 275 | 0d |  | Member | 32h |
| 277 | 1.8.22.7 | Development Final Fixes | 2d | 2006-07-25 | 2006-07-26 | 276 | 0d | finish no earlier than 2005-04-06 | Member | 16h |
| 278 | 1.8.22.8 | Post to Catalog | 1d | 2006-07-27 | 2006-07-27 | 277 | 0d |  | Component Manager | 8h |
| 279 | 1.8.23 | **Auto Pilot** | 26d | 2006-06-22 | 2006-07-27 |  | 0d |  |  | 208h |
| 280 | 1.8.23.1 | Design Posting | 6d | 2006-06-22 | 2006-06-29 |  | 0d | start no earlier than 2006-06-22 | Member | 48h |
| 281 | 1.8.23.2 | Design Review | 4d | 2006-06-30 | 2006-07-05 | 280 | 0d | finish no earlier than 2005-03-21 | Member | 32h |
| 282 | 1.8.23.3 | Design Final Fixes | 2d | 2006-07-06 | 2006-07-07 | 281 | 0d |  | Member | 16h |
| 283 | 1.8.23.4 | Creation of Dev Distro | 1d | 2006-07-10 | 2006-07-10 | 282 | 0d |  | Component Manager | 8h |
| 284 | 1.8.23.5 | Development Posting | 6d | 2006-07-11 | 2006-07-18 | 283 | 0d | start no earlier than 2005-03-30 | Member | 48h |
| 285 | 1.8.23.6 | Development Review | 4d | 2006-07-19 | 2006-07-24 | 284 | 0d |  | Member | 32h |
| 286 | 1.8.23.7 | Development Final Fixes | 2d | 2006-07-25 | 2006-07-26 | 285 | 0d | finish no earlier than 2005-04-06 | Member | 16h |
| 287 | 1.8.23.8 | Post to Catalog | 1d | 2006-07-27 | 2006-07-27 | 286 | 0d |  | Component Manager | 8h |
| 288 | 1.8.24 | **Auto Screening Tool** | 26d | 2006-06-22 | 2006-07-27 |  | 0d |  |  | 208h |
| 289 | 1.8.24.1 | Design Posting | 6d | 2006-06-22 | 2006-06-29 |  | 0d | start no earlier than 2006-06-22 | Member | 48h |
| 290 | 1.8.24.2 | Design Review | 4d | 2006-06-30 | 2006-07-05 | 289 | 0d | finish no earlier than 2005-03-21 | Member | 32h |
| 291 | 1.8.24.3 | Design Final Fixes | 2d | 2006-07-06 | 2006-07-07 | 290 | 0d |  | Member | 16h |
| 292 | 1.8.24.4 | Creation of Dev Distro | 1d | 2006-07-10 | 2006-07-10 | 291 | 0d |  | Component Manager | 8h |
| 293 | 1.8.24.5 | Development Posting | 6d | 2006-07-11 | 2006-07-18 | 292 | 0d | start no earlier than 2005-03-30 | Member | 48h |
| 294 | 1.8.24.6 | Development Review | 4d | 2006-07-19 | 2006-07-24 | 293 | 0d |  | Member | 32h |
| 295 | 1.8.24.7 | Development Final Fixes | 2d | 2006-07-25 | 2006-07-26 | 294 | 0d | finish no earlier than 2005-04-06 | Member | 16h |
| 296 | 1.8.24.8 | Post to Catalog | 1d | 2006-07-27 | 2006-07-27 | 295 | 0d |  | Component Manager | 8h |

| ID | WBS | Task | Duration | Start | Finish | Predecessors | Total slack | Free slack | Constraint | Resources | Work | Text1 |
| --- | --- | --- | --- | --- | --- | --- | --- | --- | --- | --- | --- | --- |
| 297 | 1.8.25 | **Auto Screening Management** | 26d | 2006-06-22 | 2006-07-27 |  | 0d |  |  |  | 208h |  |
| 298 | 1.8.25.1 | Design Posting | 6d | 2006-06-22 | 2006-06-29 |  | 0d |  | start no earlier than 2006-06-22 | Member | 48h |  |
| 299 | 1.8.25.2 | Design Review | 4d | 2006-06-30 | 2006-07-05 | 298 | 0d |  | finish no earlier than 2005-03-21 | Member | 32h |  |
| 300 | 1.8.25.3 | Design Final Fixes | 2d | 2006-07-06 | 2006-07-07 | 299 | 0d |  |  | Member | 16h |  |
| 301 | 1.8.25.4 | Creation of Dev Distro | 1d | 2006-07-10 | 2006-07-10 | 300 | 0d |  |  | Component Manager | 8h |  |
| 302 | 1.8.25.5 | Development Posting | 6d | 2006-07-11 | 2006-07-18 | 301 | 0d |  | start no earlier than 2005-03-30 | Member | 48h |  |
| 303 | 1.8.25.6 | Development Review | 4d | 2006-07-19 | 2006-07-24 | 302 | 0d |  |  | Member | 32h |  |
| 304 | 1.8.25.7 | Development Final Fixes | 2d | 2006-07-25 | 2006-07-26 | 303 | 0d |  | finish no earlier than 2005-04-06 | Member | 16h |  |
| 305 | 1.8.25.8 | Post to Catalog | 1d | 2006-07-27 | 2006-07-27 | 304 | 0d |  |  | Component Manager | 8h |  |
| 306 | 1.9 | **Assembly Competitions** | 35d | 2006-07-07 | 2006-08-24 |  | 0d |  |  |  | 192h |  |
| 307 | 1.9.1 | **Setup** | 16d | 2006-07-07 | 2006-07-28 |  | 10d |  |  |  |  |  |
| 308 | 1.9.1.1 | Divide Use Cases for Competitions | 1d | 2006-07-07 | 2006-07-07 | 38FS-15d | 34d |  | start no earlier than 2006-03-29 |  |  |  |
| 309 | 1.9.1.2 | TopCoder Website Content Creation | 5d | 2006-07-21 | 2006-07-27 | 38FS-5d | 20d |  |  |  |  |  |
| 310 | 1.9.1.3 | TopCoder Website Informaiton Posted | 1d | 2006-07-14 | 2006-07-14 | 38FS-10d | 5d | 0d | start no earlier than 2006-05-17 |  |  |  |
| 311 | 1.9.1.4 | Package Components | 1d | 2006-07-28 | 2006-07-28 | 38 | 0d |  |  |  |  |  |
| 312 | 1.9.2 | **Test Case Development** | 5d | 2006-07-17 | 2006-07-21 |  | 5d |  |  |  | 32h |  |
| 313 | 1.9.2.1 | Submit tests | 4d | 2006-07-17 | 2006-07-20 | 310 | 5d | 0d | start no earlier than 2006-03-22 | test case participants | 32h |  |
| 314 | 1.9.2.2 | Screen test cases | 1d | 2006-07-21 | 2006-07-21 | 313 | 5d |  |  |  |  |  |
| 315 | 1.9.3 | Team Formation | 10d | 2006-07-17 | 2006-07-28 | 310 | 19d |  |  |  |  |  |
| 316 | 1.9.4 | **Development** | 19d | 2006-07-31 | 2006-08-24 |  | 0d |  |  |  | 160h |  |
| 317 | 1.9.4.1 | **Opening Round** | 19d | 2006-07-31 | 2006-08-24 |  | 0d |  |  |  | 160h |  |
| 318 | 1.9.4.1.1 | **Team Development** | 6d | 2006-07-31 | 2006-08-07 |  | 0d |  |  |  | 48h |  |
| 319 | 1.9.4.1.1.1 | **Development of Use Cases** | 6d | 2006-07-31 | 2006-08-07 |  | 0d |  |  | All Teams | 48h | prototype conversion, sequence diagram implementation |
| 320 | 1.9.4.1.1.1.1 | Create Unit Tests | 3d | 2006-07-31 | 2006-08-02 | 311, 312 | 0d |  | start no earlier than 2006-03-28 |  |  |  |
| 321 | 1.9.4.1.1.1.2 | Convert Prototype | 3d | 2006-07-31 | 2006-08-02 | 311, 312 | 0d |  | start no earlier than 2006-03-29 |  |  |  |
| 322 | 1.9.4.1.1.1.3 | Configure components | 3d | 2006-07-31 | 2006-08-02 | 311, 312 | 0d |  | start no earlier than 2006-03-29 |  |  |  |
| 323 | 1.9.4.1.1.1.4 | Test | 3d | 2006-08-03 | 2006-08-07 | 320, 321, 322 | 0d |  |  |  |  |  |

| ID | WBS | Task | Type | Duration | Start | Finish | Predecessors | Total slack | Free slack | Constraint | Resources | Work |
| --- | --- | --- | --- | --- | --- | --- | --- | --- | --- | --- | --- | --- |
| 324 | 1.9.4.1.2 | **Test case challenge** |  | 2d | 2006-08-08 | 2006-08-09 | 323 | 0d |  |  | All Captains | 56h |
| 325 | 1.9.4.1.2.1 | Submit Challenges |  | 1d | 2006-08-08 | 2006-08-08 |  | 0d |  |  |  |  |
| 326 | 1.9.4.1.2.2 | Appeals response |  | 1d | 2006-08-09 | 2006-08-09 | 325 | 0d |  |  | Reviewer3; Reviewer2; Reviewer1; Assembly Manager; Architect | 40h |
| 327 | 1.9.4.1.3 | **Review** |  | 11d | 2006-08-10 | 2006-08-24 |  | 0d |  |  |  | 56h |
| 328 | 1.9.4.1.3.1 | Score Testcases |  | 1d | 2006-08-10 | 2006-08-10 | 324 | 1d |  |  | DE | 8h |
| 329 | 1.9.4.1.3.2 | Score Submissions |  | 2d | 2006-08-10 | 2006-08-11 | 324 | 0d |  |  | DE | 16h |
| 330 | 1.9.4.1.3.3 | Review Code |  | 2d | 2006-08-14 | 2006-08-15 | 328, 329 | 0d |  |  | Review Team | 16h |
| 331 | 1.9.4.1.3.4 | Appeals |  | 1d | 2006-08-16 | 2006-08-16 | 330 | 0d |  |  | Review Team | 8h |
| 332 | 1.9.4.1.3.5 | Appeals Response |  | 1d | 2006-08-17 | 2006-08-17 | 331 | 0d |  |  | Review Team | 8h |
| 333 | 1.9.4.1.3.6 | Final Fixes |  | 3d | 2006-08-18 | 2006-08-22 | 332 | 0d |  |  |  |  |
| 334 | 1.9.4.1.3.7 | Final Review |  | 1d | 2006-08-23 | 2006-08-23 | 333 | 0d |  |  |  |  |
| 335 | 1.9.4.1.3.8 | PM Review/Certification |  | 1d | 2006-08-24 | 2006-08-24 | 334 | 0d |  |  |  |  |
| 336 | 1.10 | **Deployment** |  | 13d | 2006-08-25 | 2006-09-12 |  | 16d | 0d |  |  | 152h |
| 337 | 1.10.1 | Deployment |  | 4d | 2006-08-25 | 2006-08-30 | 306 | 16d | 0d | finish no earlier than 2005-05-27 | Project Manager; Application Assembler 1 | 64h |
| 338 | 1.10.2 | **Testing Iteration** |  | 9d | 2006-08-31 | 2006-09-12 |  | 16d |  |  |  | 88h |
| 339 | 1.10.2.1 | Test Plan Execution |  | 3d | 2006-08-31 | 2006-09-04 | 337 | 16d | 0d | finish no earlier than 2005-06-03 | Project Manager; Application Assembler 1 | 48h |
| 340 | 1.10.2.2 | User Acceptance Testing | milestone | 5d | 2006-09-05 | 2006-09-11 | 339 | 16d | 0d | finish no earlier than 2005-06-03 | Customer | 40h |
| 341 | 1.10.2.3 | PM Certification |  | 1d | 2006-09-12 | 2006-09-12 | 340 | 16d |  |  |  |  |
| 342 | 1.11 | **Support** |  | 30d | 2006-08-25 | 2006-10-05 |  | 0d |  |  |  | 240h |
| 343 | 1.11.1 | Capture DRs |  | 15d | 2006-08-25 | 2006-09-14 | 306 | 0d |  |  | Project Manager | 120h |
| 344 | 1.11.2 | Release Fix |  | 15d | 2006-09-15 | 2006-10-05 | 343 | 0d |  |  | Project Manager | 120h |
| 345 | 1.12 | Send out how-to info to users |  | 1d | 2006-08-25 | 2006-08-25 | 335 | 29d |  |  |  |  |
| 346 | 1.13 | Beta Release to internal users |  | 1d | 2006-09-13 | 2006-09-13 | 336 | 16d |  |  |  |  |
